# Menta 0.3 research

How a schedule from GanttProject changed from version to version. A marks actual dates.

## Version 1 (saved 2012-01-15)

Note of the change: menta-0.3-94: Crete project plan. Added rainy day scenario project plan

| ID | WBS | Task | Duration | Start | Finish | Predecessors |
| --- | --- | --- | --- | --- | --- | --- |
| 1 | 1 | **Analysis** | 11d | 2012-01-16 | 2012-01-30 |  |
| 2 |  | Incidents | 5d | 2012-01-16 | 2012-01-20 |  |
| 3 |  | Workbook articles | 6d | 2012-01-23 | 2012-01-30 | 2 |
| 4 | 2 | **Design Emotion Machine** | 38d | 2012-01-23 | 2012-03-14 |  |
| 5 |  | Inbound textual description | 1d | 2012-01-23 | 2012-01-23 |  |
| 6 |  | Internal knowledge(atom) representations | 8d | 2012-01-23 | 2012-02-01 |  |
| 7 |  | Formalization outbound structures | 6d | 2012-02-02 | 2012-02-09 | 6 |
| 8 |  | Design Solution HowTo-s | 16d | 2012-01-24 | 2012-02-14 | 5 |
| 9 |  | Design Critics | 12d | 2012-02-10 | 2012-02-27 | 7 |
| 10 |  | Design Selector | 12d | 2012-02-15 | 2012-03-01 | 8 |
| 11 |  | Design Way2Think | 12d | 2012-02-28 | 2012-03-14 | 9 |
| 12 |  | Analysis and design | 0d | 2012-03-15 | 2012-03-15 | 1, 4 |
| 13 | 4 | **OpenCog prototype** | 31d | 2012-01-31 | 2012-03-13 | 1 |
| 14 | 4.1 | **CogBuntu** | 3d | 2012-01-31 | 2012-02-02 |  |
| 15 |  | Red documentation | 1d | 2012-01-31 | 2012-01-31 |  |
| 16 |  | Install CogBuntu | 2d | 2012-02-01 | 2012-02-02 | 15 |
| 17 | 4.2 | **AtomSpace Analysis** | 22d | 2012-02-03 | 2012-03-05 | 14 |
| 18 |  | Read documentation | 2d | 2012-02-03 | 2012-02-06 |  |
| 19 |  | Test storage using Cookbook | 4d | 2012-02-07 | 2012-02-10 | 18 |
| 20 |  | Test storage usability for knowledge representation | 16d | 2012-02-13 | 2012-03-05 | 19 |
| 21 | 4.3 | **Probability Logic Engines analysis** | 22d | 2012-02-03 | 2012-03-05 | 14 |
| 22 | 4.3.1 | **PLN analysis** | 6d | 2012-02-03 | 2012-02-10 |  |
| 23 |  | Read documentation | 2d | 2012-02-03 | 2012-02-06 |  |
| 24 |  | Test PLN using NARS data | 4d | 2012-02-07 | 2012-02-10 | 23 |
| 25 |  | Bayesian inference | 16d | 2012-02-13 | 2012-03-05 | 24 |
| 26 | 4.4 | **Embodiment** | 28d | 2012-02-03 | 2012-03-13 | 1, 14 |
| 27 |  | Read documentation | 8d | 2012-02-03 | 2012-02-14 |  |
| 28 |  | Test embodiment system to simulate Intellix | 20d | 2012-02-15 | 2012-03-13 | 27 |
| 29 | 4.5 | **Natural language processors** | 18d | 2012-02-03 | 2012-02-28 | 14 |
| 30 |  | RelEx | 8d | 2012-02-03 | 2012-02-14 |  |
| 31 |  | Stanford Parser | 4d | 2012-02-15 | 2012-02-20 | 30 |
| 32 |  | OpenNLP | 6d | 2012-02-21 | 2012-02-28 | 31 |
| 33 |  | OpenCog analysis | 0d | 2012-03-14 | 2012-03-14 | 13 |
| 34 | 6 | **System Training prototype** | 60d | 2012-02-29 | 2012-05-22 | 14 |
| 35 |  | MOSES | 18d | 2012-02-29 | 2012-03-23 | 29 |
| 36 |  | Bayesian network | 16d | 2012-03-06 | 2012-03-27 | 17 |
| 37 | 6.3 | **Training** | 19d | 2012-03-02 | 2012-03-28 |  |
| 38 | 6.3.1 | **Training data structures** | 19d | 2012-03-02 | 2012-03-28 |  |
| 39 |  | Incident description | 1d | 2012-03-02 | 2012-03-02 | 10 |
| 40 |  | Incident category | 1d | 2012-03-05 | 2012-03-05 | 39 |
| 41 | 6.3.1.3 | **Incident formalized description** | 10d | 2012-03-15 | 2012-03-28 | 11 |
| 42 |  | Model | 10d | 2012-03-15 | 2012-03-28 | 11 |
| 43 |  | Incident solution(Migrate HowTo approach | 10d | 2012-03-06 | 2012-03-19 | 40 |
| 44 | 6.4 | **Create formalized description generalisation mechanism** | 38d | 2012-03-06 | 2012-04-26 |  |
| 45 | 6.4.1 | **Create common parts selector and variable introducer** | 38d | 2012-03-06 | 2012-04-26 |  |
| 46 |  | Comparator | 6d | 2012-03-06 | 2012-03-13 | 21 |
| 47 |  | Recursive runner | 8d | 2012-03-14 | 2012-03-23 | 46 |
| 48 | 6.4.1.3 | **Variable introducer** | 21d | 2012-03-29 | 2012-04-26 |  |
| 49 |  | Design variable structure | 4d | 2012-03-29 | 2012-04-03 | 42 |
| 50 |  | Implement and test variable | 8d | 2012-04-04 | 2012-04-13 | 49 |
| 51 |  | Named variables builder | 8d | 2012-04-16 | 2012-04-25 | 50 |
| 52 |  | Unnamed variables builder | 8d | 2012-04-17 | 2012-04-26 | 63 |
| 53 | 6.5 | **Incident classification algorithm** | 16d | 2012-03-14 | 2012-04-04 |  |
| 54 | 6.5.1 | **Create test data for KnowledgeBaseAnnotator** | 16d | 2012-03-14 | 2012-04-04 |  |
| 55 |  | Allowed Software list | 6d | 2012-03-14 | 2012-03-21 | 26 |
| 56 |  | Over software actions | 4d | 2012-03-26 | 2012-03-29 | 35 |
| 57 |  | Software attributes | 8d | 2012-03-26 | 2012-04-04 | 47 |
| 58 |  | Software states | 4d | 2012-03-20 | 2012-03-23 | 43 |
| 59 | 6.6 | **Create validation criteria inference approach** | 46d | 2012-03-20 | 2012-05-22 |  |
| 60 |  | Analyse validation criteria types | 10d | 2012-03-22 | 2012-04-04 | 55 |
| 61 |  | Create descriptions via predicates (logical operations) | 14d | 2012-03-20 | 2012-04-06 | 43 |
| 62 | 6.6.3 | **Create validation mechanism possibly via PLN** | 12d | 2012-03-30 | 2012-04-16 |  |
| 63 |  | Design adapter | 8d | 2012-04-05 | 2012-04-16 | 60 |
| 64 |  | Implement adapter | 12d | 2012-03-30 | 2012-04-16 | 56 |
| 65 | 6.6.4 | **Create Solution generation prototype** | 32d | 2012-04-09 | 2012-05-22 |  |
| 66 |  | HowTo types = 16 - 40 | 16d | 2012-04-09 | 2012-04-30 | 61 |
| 67 |  | Solution description language = 32 - 40 | 32d | 2012-04-09 | 2012-05-22 | 61 |
| 68 |  | Create 10 Solution descriptions = 16 - 32 | 16d | 2012-04-17 | 2012-05-08 | 64 |
| 69 | 6.6.4.4 | **Train Solutions** | 23d | 2012-04-17 | 2012-05-17 |  |
| 70 |  | Analyse machine learning algorithms (C 4.5, Bayes network) = 16 - 24 | 16d | 2012-04-17 | 2012-05-08 | 64 |

| ID | WBS | Task | Duration | Start | Finish | Predecessors |
| --- | --- | --- | --- | --- | --- | --- |
| 71 |  | Train 10 Solutions (in: formalised problem description, out Solution) = 16 - 24 | 16d | 2012-04-26 | 2012-05-17 | 51 |
| 72 |  | Training prototype milestone | 0d | 2012-05-23 | 2012-05-23 | 34 |
| 73 | 8 | **AIV Solution, for the specification see page.** | 36d | 2012-05-24 | 2012-07-12 | 72 |
| 74 | 8.1 | **Auto-correct analysis should use measures: precision, recall and F-measure** | 6d | 2012-06-29 | 2012-07-06 |  |
| 75 | 8.1.1 | **AbiWord** | 6d | 2012-05-24 | 2012-05-31 |  |
| 76 |  | Read Syntax check module documentation = 1 | 1d | 2012-05-24 | 2012-05-24 |  |
| 77 |  | Install AbiWord = 1 - 2 | 1d | 2012-05-25 | 2012-05-25 | 76 |
| 78 |  | Test 10 incidents descriptions = 3.5 - 4 | 4d | 2012-05-28 | 2012-05-31 | 77 |
| 79 | 8.1.2 | **OpenOffice(LibreOffice)** | 6d | 2012-05-24 | 2012-05-31 |  |
| 80 |  | Read Auto-correct module documentation OpenOffice LibreOffice = 1 | 1d | 2012-05-24 | 2012-05-24 |  |
| 81 |  | Install OpenOffice or LibreOffice = 1 - 2 | 1d | 2012-05-25 | 2012-05-25 | 80 |
| 82 |  | Test 10 incidents descriptions = 3.5 - 4 | 4d | 2012-05-28 | 2012-05-31 | 81 |
| 83 | 8.1.3 | **OpenCog** | 6d | 2012-05-24 | 2012-05-31 |  |
| 84 |  | Read Auto-correct module documentation Grammatical correction = 1 - 2 | 1d | 2012-05-24 | 2012-05-24 |  |
| 85 |  | Install OpenCog = 1 - 2 | 1d | 2012-05-25 | 2012-05-25 | 84 |
| 86 |  | Test 10 incidents descriptions = 3.5 - 4 | 4d | 2012-05-28 | 2012-05-31 | 85 |
| 87 | 8.1.4 | **KOffice** | 6d | 2012-05-24 | 2012-05-31 |  |
| 88 |  | Read Auto-correct module documentation = 1 - 2 | 1d | 2012-05-24 | 2012-05-24 |  |
| 89 |  | Install KOffice = 1 - 4 [Could be not strait forward under Win] | 1d | 2012-05-25 | 2012-05-25 | 88 |
| 90 |  | Test 10 incidents descriptions = 3.5 - 4 | 4d | 2012-05-28 | 2012-05-31 | 89 |
| 91 | 8.2 | **KnowledgeBaseAnnotator, see specification. knowledge base integration analysis.** | 36d | 2012-05-24 | 2012-07-12 |  |
| 92 | 8.2.1 | **WolframAlpha** | 30d | 2012-05-24 | 2012-07-04 |  |
| 93 |  | Explore API to integrate = 10 - 20 [could be not strait forward] | 10d | 2012-05-24 | 2012-06-06 |  |
| 94 |  | Test information retrieval and annotation options = 20 - 30 [could contain information not from SE domain] | 20d | 2012-06-07 | 2012-07-04 | 93 |
| 95 | 8.2.2 | **TrueKnowledge** | 30d | 2012-05-24 | 2012-07-04 |  |
| 96 |  | Explore API to integrate = 10 - 20 [could be not strait forward] | 10d | 2012-05-24 | 2012-06-06 |  |
| 97 |  | Test information retrieval and annotation options = 20 - 30 [could contain information not from SE domain] | 20d | 2012-06-07 | 2012-07-04 | 96 |
| 98 | 8.2.3 | **ConceptNet** | 30d | 2012-06-01 | 2012-07-12 |  |
| 99 |  | Explore API to integrate = 10 - 20 [could be not strait forward] | 10d | 2012-06-01 | 2012-06-14 | 78 |
| 100 |  | Test information retrieval and annotation options = 20 - 30 [could contain information not from SE domain] | 20d | 2012-06-15 | 2012-07-12 | 99 |
| 101 | 8.2.4 | **ConceptNet5** | 30d | 2012-06-01 | 2012-07-12 |  |
| 102 |  | Explore API to integrate = 10 - 20 [could be not strait forward] | 10d | 2012-06-01 | 2012-06-14 | 82 |
| 103 |  | Test information retrieval and annotation options = 20 - 30 [could contain information not from SE domain] | 20d | 2012-06-15 | 2012-07-12 | 102 |
| 104 | 8.2.5 | **WordNet, is integrated in ConceptNet5 but could be useful standalone** | 30d | 2012-06-01 | 2012-07-12 |  |
| 105 |  | Explore API to integrate = 10 - 20 [could be not strait forward] | 10d | 2012-06-01 | 2012-06-14 | 86 |
| 106 |  | Test information retrieval and annotation options = 20 - 30 [could contain information not from SE domain] | 20d | 2012-06-15 | 2012-07-12 | 105 |
| 107 |  | AIV Solution | 0d | 2012-07-13 | 2012-07-13 | 73 |
| 108 | 10 | **Emotion Machine Soltion** | 36d | 2012-07-17 | 2012-09-04 | 107 |
| 109 | 10.1 | **Prototype Critics, Way2Think, Selector** | 14d | 2012-07-17 | 2012-08-03 |  |
| 110 | 10.1.1 | **Implement Critics** | 14d | 2012-07-17 | 2012-08-03 |  |
| 111 | 10.1.1.1 | **Deliberative Critics** | 8d | 2012-07-17 | 2012-07-26 |  |
| 112 |  | Current activity goal representation = 6 - 8 [possibly should try several approaches] | 6d | 2012-07-17 | 2012-07-24 |  |
| 113 |  | Current task state representation = 4 - 6 [possibly should try several representations] | 4d | 2012-07-17 | 2012-07-20 |  |
| 114 |  | Reasoning over current state with Reasoner adapter development = 8 - 10 | 8d | 2012-07-17 | 2012-07-26 |  |
| 115 | 10.1.1.2 | **Reflective Critic** | 6d | 2012-07-17 | 2012-07-24 |  |
| 116 | 10.1.1.2.1 | **Develop Energy control mechanism.** | 6d | 2012-07-17 | 2012-07-24 |  |
| 117 |  | Design Energy concept = 4 | 4d | 2012-07-17 | 2012-07-20 |  |
| 118 |  | Design Energy assignment mechanism during training = 2 | 2d | 2012-07-17 | 2012-07-18 |  |
| 119 |  | Implement Energy concept = 2 | 2d | 2012-07-23 | 2012-07-24 | 117 |
| 120 |  | Implement Energy assignment mechanism = 4 | 4d | 2012-07-19 | 2012-07-24 | 118 |
| 121 | 10.1.1.3 | **Develop Sub-goal control mechanism.** | 8d | 2012-07-23 | 2012-08-01 |  |
| 122 |  | Design sub-goal control mechanism = 4 | 4d | 2012-07-23 | 2012-07-26 | 113 |
| 123 |  | Implement sub-goal control mechanism = 4 | 4d | 2012-07-27 | 2012-08-01 | 122 |
| 124 | 10.1.1.4 | **Develop Evidence control mechanism.** | 8d | 2012-07-25 | 2012-08-03 |  |
| 125 |  | Design Evidence control mechanism = 4 - 10 [no clear understanding of evidence control mechanism, possibly further research required] | 4d | 2012-07-25 | 2012-07-30 | 112 |
| 126 |  | Implement Evidence control mechanism = 4 - 10 | 4d | 2012-07-31 | 2012-08-03 | 125 |
| 127 |  | Prototype Selector = 6 - 8 | 6d | 2012-07-23 | 2012-07-30 | 117 |
| 128 | 10.3 | **Prototype Way2Think** | 30d | 2012-07-25 | 2012-09-04 |  |
| 129 |  | Create base constructs(HowTo-s) = 2 - 4 | 2d | 2012-07-25 | 2012-07-26 | 119 |
| 130 |  | Knowing How (select from KB) = 4 - 8 | 4d | 2012-07-25 | 2012-07-30 | 120 |
| 131 |  | Extensive Search (search in KB) = 12 - 24 [graph search could be not strait-forward] | 12d | 2012-07-27 | 2012-08-13 | 129 |
| 132 |  | Reasoning by Analogy = 32 - 40 [graph analogy API could be not strait forward] | 11d | 2012-07-31 | 2012-08-14 | 114, 127 |
| 133 | 10.3.5 | **Divide and Conquer** | 24d | 2012-07-31 | 2012-08-31 |  |
| 134 | 10.3.5.1 | **Add analytical HowTo-s to basic set:** | 8d | 2012-07-31 | 2012-08-09 |  |
| 135 |  | Wrong software was installed = 4 | 4d | 2012-08-06 | 2012-08-09 | 126 |
| 136 |  | Two direct instructions in one incident description = 4 | 4d | 2012-07-31 | 2012-08-03 | 130 |
| 137 | 10.3.5.2 | **Add Interpretation mechanism over current state of the system** | 20d | 2012-08-06 | 2012-08-31 |  |
| 138 |  | Variable and current state addressing = 12 - 16 | 12d | 2012-08-06 | 2012-08-21 | 136 |
| 139 |  | Logical operation execution = 16 | 16d | 2012-08-10 | 2012-08-31 | 135 |
| 140 | 10.3.6 | **Simulation (build the model based on inbound information) =** | 16d | 2012-08-14 | 2012-09-04 |  |

| ID | WBS | Task | Duration | Start | Finish | Predecessors |
| --- | --- | --- | --- | --- | --- | --- |
| 141 |  | Search for concept in the KB. = 16 | 16d | 2012-08-14 | 2012-09-04 | 131 |
| 142 |  | Search for properties in KB. = 4 | 4d | 2012-08-15 | 2012-08-20 | 132 |
| 143 |  | Create connections of found concepts. = 2 | 2d | 2012-08-15 | 2012-08-16 | 132 |
| 144 |  | Support context. = 2 | 2d | 2012-08-22 | 2012-08-23 | 138 |
| 145 | 10.4 | **Test main perceiving workflow** | 5d | 2012-08-24 | 2012-08-30 |  |
| 146 |  | Prototype Main Workflow. = 10 - 14 [some not well tested bugs could slow down the development]{Models, Critics, Way2Think ready to use} | 5d | 2012-08-24 | 2012-08-30 | 143, 144 |
| 147 |  | Emotion machine solution | 0d | 2012-09-05 | 2012-09-05 | 108 |

## Version 2 (saved 2012-01-16)

Note of the change: menta-0.3-90: Create prototypes with estimate list. Created rainy day project plan.

Last finish 2012-09-05 → 2014-05-08 (+610d).

Changed:

| ID | Task | Start | Finish | Duration | Predecessors | Other |
| --- | --- | --- | --- | --- | --- | --- |
| 1 | **Analysis** |  | 2012-01-30 → 2012-02-27 (+28d) | 11d → 31d |  |  |
| 2 | Incidents |  | 2012-01-20 → 2012-02-03 (+14d) | 5d → 15d |  | resources Bulat; Alex [50%]; Renat; Artem; Adel [50%] → Max; Alex [50%] |
| 3 | Workbook articles | 2012-01-23 → 2012-02-06 (+14d) | 2012-01-30 → 2012-02-27 (+28d) | 6d → 16d |  | resources Bulat; Alex; Renat; Artem; Adel → Max; Alex |
| 4 | **Design Emotion Machine** |  | 2012-03-14 → 2012-03-22 (+8d) | 38d → 44d |  |  |
| 5 | Inbound textual description |  | 2012-01-23 → 2012-01-24 (+1d) | 1d → 2d |  |  |
| 6 | Internal knowledge(atom) representations |  | 2012-02-01 → 2012-02-03 (+2d) | 8d → 10d |  |  |
| 7 | Formalization outbound structures | 2012-02-02 → 2012-02-06 (+4d) | 2012-02-09 → 2012-02-17 (+8d) | 6d → 10d |  |  |
| 8 | Design Solution HowTo-s | 2012-01-24 → 2012-01-25 (+1d) | 2012-02-14 → 2012-02-15 (+1d) |  |  |  |
| 9 | Design Critics | 2012-02-10 → 2012-02-20 (+10d) | 2012-02-27 → 2012-03-06 (+8d) |  |  |  |
| 10 | Design Selector | 2012-02-15 → 2012-02-16 (+1d) | 2012-03-01 → 2012-03-02 (+1d) |  |  |  |
| 11 | Design Way2Think | 2012-02-28 → 2012-03-07 (+8d) | 2012-03-14 → 2012-03-22 (+8d) |  |  |  |
| 12 | Analysis and design | 2012-03-15 → 2012-03-23 (+8d) | 2012-03-15 → 2012-03-23 (+8d) |  |  |  |
| 13 | **OpenCog prototype** | 2012-01-31 → 2012-03-05 (+34d) | 2012-03-13 → 2012-07-24 (+133d) | 31d → 102d |  |  |
| 14 | **CogBuntu** | 2012-01-31 → 2012-03-05 (+34d) | 2012-02-02 → 2012-03-09 (+36d) | 3d → 5d |  |  |
| 15 | Red documentation | 2012-01-31 → 2012-03-05 (+34d) | 2012-01-31 → 2012-03-05 (+34d) |  | none → 10 | resources Bulat; Alex; Renat; Artem; Adel → Max; Alex |
| 16 | Install CogBuntu | 2012-02-01 → 2012-03-06 (+34d) | 2012-02-02 → 2012-03-09 (+36d) | 2d → 4d |  | resources Bulat; Alex; Renat; Artem; Adel → Max; Alex |
| 17 | **AtomSpace Analysis** | 2012-02-03 → 2012-03-12 (+38d) | 2012-03-05 → 2012-04-11 (+37d) | 22d → 23d |  | resources Artem → Alex |
| 18 | Read documentation | 2012-02-03 → 2012-03-12 (+38d) | 2012-02-06 → 2012-03-15 (+38d) | 2d → 4d |  | resources Artem → Alex |
| 19 | Test storage using Cookbook | 2012-02-07 → 2012-03-16 (+38d) | 2012-02-10 → 2012-03-27 (+46d) | 4d → 8d |  | resources none → Alex |
| 20 | Test storage usability for knowledge representation | 2012-02-13 → 2012-03-29 (+45d) | 2012-03-05 → 2012-04-11 (+37d) | 16d → 10d | 19 → 19, 23 | resources none → Max; Alex |
| 21 | **Probability Logic Engines analysis** | 2012-02-03 → 2012-03-23 (+49d) | 2012-03-05 → 2012-05-09 (+65d) | 22d → 34d |  | resources Renat → Max |
| 22 | **PLN analysis** | 2012-02-03 → 2012-03-23 (+49d) | 2012-02-10 → 2012-04-17 (+67d) | 6d → 18d | none → 11 | resources none → Max |
| 23 | Read documentation | 2012-02-03 → 2012-03-23 (+49d) | 2012-02-06 → 2012-03-28 (+51d) | 2d → 4d |  | resources none → Max |
| 24 | Test PLN using NARS data | 2012-02-07 → 2012-04-12 (+65d) | 2012-02-10 → 2012-04-17 (+67d) |  | 23 → 20, 23 | resources none → Max; Alex |
| 25 | Bayesian inference | 2012-02-13 → 2012-04-18 (+65d) | 2012-03-05 → 2012-05-09 (+65d) |  |  | resources none → Max; Alex |
| 26 | **Embodiment** | 2012-02-03 → 2012-05-10 (+97d) | 2012-03-13 → 2012-06-28 (+107d) | 28d → 36d | 1, 14 → 16, 17, 25 | resources Adel → Max; Alex |
| 27 | Read documentation | 2012-02-03 → 2012-05-10 (+97d) | 2012-02-14 → 2012-05-31 (+107d) | 8d → 16d | none → 25 | resources none → Max; Alex |
| 28 | Test embodiment system to simulate Intellix | 2012-02-15 → 2012-06-01 (+107d) | 2012-03-13 → 2012-06-28 (+107d) |  |  | resources none → Max; Alex |
| 29 | **Natural language processors** | 2012-02-03 → 2012-06-29 (+147d) | 2012-02-28 → 2012-07-24 (+147d) |  | 14 → 14, 16, 21, 26 | resources Bulat → Max; Alex |
| 30 | RelEx | 2012-02-03 → 2012-06-29 (+147d) | 2012-02-14 → 2012-07-10 (+147d) |  |  |  |
| 31 | Stanford Parser | 2012-02-15 → 2012-07-11 (+147d) | 2012-02-20 → 2012-07-16 (+147d) |  |  |  |
| 32 | OpenNLP | 2012-02-21 → 2012-07-17 (+147d) | 2012-02-28 → 2012-07-24 (+147d) |  |  |  |
| 33 | OpenCog analysis | 2012-03-14 → 2012-07-25 (+133d) | 2012-03-14 → 2012-07-25 (+133d) |  | 13 → 13, 32 |  |
| 34 | **System Training prototype** | 2012-02-29 → 2012-07-26 (+148d) | 2012-05-22 → 2013-05-20 (+363d) | 60d → 213d | 14 → 14, 33 |  |
| 35 | MOSES | 2012-02-29 → 2012-07-26 (+148d) | 2012-03-23 → 2012-08-20 (+150d) |  |  | resources Bulat → Max; Alex |
| 36 | Bayesian network | 2012-03-06 → 2012-08-21 (+168d) | 2012-03-27 → 2012-09-11 (+168d) |  | 17 → 35 | resources Artem → Max; Alex |
| 37 | **Training** | 2012-03-02 → 2012-09-12 (+194d) | 2012-03-28 → 2012-10-02 (+188d) | 19d → 15d | none → 36 |  |
| 38 | **Training data structures** | 2012-03-02 → 2012-09-12 (+194d) | 2012-03-28 → 2012-10-02 (+188d) | 19d → 15d |  |  |
| 39 | Incident description | 2012-03-02 → 2012-09-12 (+194d) | 2012-03-02 → 2012-09-12 (+194d) |  |  |  |
| 40 | Incident category | 2012-03-05 → 2012-09-12 (+191d) | 2012-03-05 → 2012-09-12 (+191d) |  | 39 → none | resources Alex → Max |
| 41 | **Incident formalized description** | 2012-03-15 → 2012-09-13 (+182d) | 2012-03-28 → 2012-09-28 (+184d) | 10d → 12d |  |  |
| 42 | Model | 2012-03-15 → 2012-09-13 (+182d) | 2012-03-28 → 2012-09-28 (+184d) | 10d → 12d | 11 → 39 | resources Max → Alex |
| 43 | Incident solution(Migrate HowTo approach | 2012-03-06 → 2012-09-13 (+191d) | 2012-03-19 → 2012-10-02 (+197d) | 10d → 14d |  | resources Alex → Max |
| 44 | **Create formalized description generalisation mechanism** | 2012-03-06 → 2012-10-01 (+209d) | 2012-04-26 → 2012-11-21 (+209d) |  | none → 43 |  |
| 45 | **Create common parts selector and variable introducer** | 2012-03-06 → 2012-10-01 (+209d) | 2012-04-26 → 2012-11-21 (+209d) |  |  |  |
| 46 | Comparator | 2012-03-06 → 2012-10-01 (+209d) | 2012-03-13 → 2012-10-10 (+211d) | 6d → 8d | 21 → 42 | resources Renat → Alex |
| 47 | Recursive runner | 2012-03-14 → 2012-10-03 (+203d) | 2012-03-23 → 2012-10-12 (+203d) |  | 46 → 43 | resources Renat → Max |
| 48 | **Variable introducer** | 2012-03-29 → 2012-10-15 (+200d) | 2012-04-26 → 2012-11-21 (+209d) | 21d → 28d |  |  |
| 49 | Design variable structure | 2012-03-29 → 2012-10-15 (+200d) | 2012-04-03 → 2012-10-18 (+198d) |  | 42 → 47 |  |
| 50 | Implement and test variable | 2012-04-04 → 2012-10-19 (+198d) | 2012-04-13 → 2012-10-30 (+200d) |  |  |  |
| 51 | Named variables builder | 2012-04-16 → 2012-10-31 (+198d) | 2012-04-25 → 2012-11-09 (+198d) |  |  |  |
| 52 | Unnamed variables builder | 2012-04-17 → 2012-11-12 (+209d) | 2012-04-26 → 2012-11-21 (+209d) |  | 63 → 1, 51 | resources Adel → Max |
| 53 | **Incident classification algorithm** | 2012-03-14 → 2012-10-11 (+211d) | 2012-04-04 → 2012-11-27 (+237d) | 16d → 34d |  |  |
| 54 | **Create test data for KnowledgeBaseAnnotator** | 2012-03-14 → 2012-10-11 (+211d) | 2012-04-04 → 2012-11-27 (+237d) | 16d → 34d |  |  |
| 55 | Allowed Software list | 2012-03-14 → 2012-10-11 (+211d) | 2012-03-21 → 2012-10-22 (+215d) | 6d → 8d | 26 → 26, 46 | resources Adel → Alex |
| 56 | Over software actions | 2012-03-26 → 2012-10-23 (+211d) | 2012-03-29 → 2012-10-30 (+215d) | 4d → 6d | 35 → 35, 55 | resources Bulat → Alex |
| 57 | Software attributes | 2012-03-26 → 2012-10-31 (+219d) | 2012-04-04 → 2012-11-21 (+231d) | 8d → 16d | 47 → 47, 56 | resources Renat → Alex |
| 58 | Software states | 2012-03-20 → 2012-11-22 (+247d) | 2012-03-23 → 2012-11-27 (+249d) |  | 43 → 43, 52, 57 | resources Alex → Max; Alex |
| 59 | **Create validation criteria inference approach** | 2012-03-20 → 2012-11-28 (+253d) | 2012-05-22 → 2013-05-20 (+363d) | 46d → 124d |  |  |
| 60 | Analyse validation criteria types | 2012-03-22 → 2012-11-28 (+251d) | 2012-04-04 → 2012-12-11 (+251d) |  | 55 → 58 | resources Adel → Max; Alex |
| 61 | Create descriptions via predicates (logical operations) | 2012-03-20 → 2012-12-12 (+267d) | 2012-04-06 → 2012-12-31 (+269d) |  | 43 → 52, 60 | resources Alex; Artem → Max; Alex |
| 62 | **Create validation mechanism possibly via PLN** | 2012-03-30 → 2013-01-01 (+277d) | 2012-04-16 → 2013-01-28 (+287d) | 12d → 20d |  |  |
| 63 | Design adapter | 2012-04-05 → 2013-01-01 (+271d) | 2012-04-16 → 2013-01-10 (+269d) |  | 60 → 60, 61 | resources Adel → Max; Alex |
| 64 | Implement adapter | 2012-03-30 → 2013-01-11 (+287d) | 2012-04-16 → 2013-01-28 (+287d) |  | 56 → 56, 63 | resources Bulat; Renat → Max; Alex |
| 65 | **Create Solution generation prototype** | 2012-04-09 → 2013-01-29 (+295d) | 2012-05-22 → 2013-05-20 (+363d) | 32d → 80d |  |  |
| 66 | HowTo types = 16 - 40 | 2012-04-09 → 2013-01-29 (+295d) | 2012-04-30 → 2013-02-25 (+301d) | 16d → 20d | 61 → 61, 64 | resources Alex → Max; Alex |
| 67 | Solution description language = 32 - 40 | 2012-04-09 → 2013-02-26 (+323d) | 2012-05-22 → 2013-03-25 (+307d) | 32d → 20d | 61 → 61, 66 | resources Artem → Max; Alex |
| 68 | Create 10 Solution descriptions = 16 - 32 | 2012-04-17 → 2013-03-26 (+343d) | 2012-05-08 → 2013-04-16 (+343d) |  | 64 → 64, 67 | resources Bulat → Max; Alex |
| 69 | **Train Solutions** | 2012-04-17 → 2013-04-17 (+365d) | 2012-05-17 → 2013-05-20 (+368d) | 23d → 24d |  |  |
| 70 | Analyse machine learning algorithms (C 4.5, Bayes network) = 16 - 24 | 2012-04-17 → 2013-04-17 (+365d) | 2012-05-08 → 2013-05-02 (+359d) | 16d → 12d | 64 → 64, 68 | resources Renat → Max; Alex |

| ID | Task | Start | Finish | Duration | Predecessors | Other |
| --- | --- | --- | --- | --- | --- | --- |
| 71 | Train 10 Solutions (in: formalised problem description, out Solution) = 16 - 24 | 2012-04-26 → 2013-05-03 (+372d) | 2012-05-17 → 2013-05-20 (+368d) | 16d → 12d | 51 → 51, 70 | resources Max → Max; Alex |
| 72 | Training prototype milestone | 2012-05-23 → 2013-05-21 (+363d) | 2012-05-23 → 2013-05-21 (+363d) |  |  |  |
| 73 | **AIV Solution, for the specification see page.** | 2012-05-24 → 2013-05-24 (+365d) | 2012-07-12 → 2013-12-02 (+508d) | 36d → 137d |  |  |
| 74 | **Auto-correct analysis should use measures: precision, recall and F-measure** | 2012-06-29 → 2013-05-24 (+329d) | 2012-07-06 → 2013-06-10 (+339d) | 6d → 12d |  |  |
| 75 | **AbiWord** | 2012-05-24 → 2013-05-24 (+365d) | 2012-05-31 → 2013-05-31 (+365d) |  |  |  |
| 76 | Read Syntax check module documentation = 1 | 2012-05-24 → 2013-05-24 (+365d) | 2012-05-24 → 2013-05-24 (+365d) |  |  |  |
| 77 | Install AbiWord = 1 - 2 | 2012-05-25 → 2013-05-27 (+367d) | 2012-05-25 → 2013-05-27 (+367d) |  |  |  |
| 78 | Test 10 incidents descriptions = 3.5 - 4 | 2012-05-28 → 2013-05-28 (+365d) | 2012-05-31 → 2013-05-31 (+365d) |  |  |  |
| 79 | **OpenOffice(LibreOffice)** | 2012-05-24 → 2013-05-24 (+365d) | 2012-05-31 → 2013-05-31 (+365d) |  |  |  |
| 80 | Read Auto-correct module documentation OpenOffice LibreOffice = 1 | 2012-05-24 → 2013-05-24 (+365d) | 2012-05-24 → 2013-05-24 (+365d) |  |  |  |
| 81 | Install OpenOffice or LibreOffice = 1 - 2 | 2012-05-25 → 2013-05-27 (+367d) | 2012-05-25 → 2013-05-27 (+367d) |  |  |  |
| 82 | Test 10 incidents descriptions = 3.5 - 4 | 2012-05-28 → 2013-05-28 (+365d) | 2012-05-31 → 2013-05-31 (+365d) |  |  |  |
| 83 | **OpenCog** | 2012-05-24 → 2013-06-03 (+375d) | 2012-05-31 → 2013-06-10 (+375d) |  | none → 78 |  |
| 84 | Read Auto-correct module documentation Grammatical correction = 1 - 2 | 2012-05-24 → 2013-06-03 (+375d) | 2012-05-24 → 2013-06-03 (+375d) |  |  | resources Adel → Max |
| 85 | Install OpenCog = 1 - 2 | 2012-05-25 → 2013-06-04 (+375d) | 2012-05-25 → 2013-06-04 (+375d) |  |  | resources Adel → Max |
| 86 | Test 10 incidents descriptions = 3.5 - 4 | 2012-05-28 → 2013-06-05 (+373d) | 2012-05-31 → 2013-06-10 (+375d) |  |  | resources Adel → Max |
| 87 | **KOffice** | 2012-05-24 → 2013-06-03 (+375d) | 2012-05-31 → 2013-06-10 (+375d) |  | none → 82 |  |
| 88 | Read Auto-correct module documentation = 1 - 2 | 2012-05-24 → 2013-06-03 (+375d) | 2012-05-24 → 2013-06-03 (+375d) |  |  | resources Bulat → Alex |
| 89 | Install KOffice = 1 - 4 [Could be not strait forward under Win] | 2012-05-25 → 2013-06-04 (+375d) | 2012-05-25 → 2013-06-04 (+375d) |  |  | resources Bulat → Alex |
| 90 | Test 10 incidents descriptions = 3.5 - 4 | 2012-05-28 → 2013-06-05 (+373d) | 2012-05-31 → 2013-06-10 (+375d) |  |  | resources Bulat → Alex |
| 91 | **KnowledgeBaseAnnotator, see specification. knowledge base integration analysis.** | 2012-05-24 → 2013-06-11 (+383d) | 2012-07-12 → 2013-12-02 (+508d) | 36d → 125d |  |  |
| 92 | **WolframAlpha** | 2012-05-24 → 2013-06-11 (+383d) | 2012-07-04 → 2013-07-15 (+376d) | 30d → 25d |  |  |
| 93 | Explore API to integrate = 10 - 20 [could be not strait forward] | 2012-05-24 → 2013-06-11 (+383d) | 2012-06-06 → 2013-06-24 (+383d) |  | none → 86, 90 | resources Renat → Max; Alex |
| 94 | Test information retrieval and annotation options = 20 - 30 [could contain information not from SE domain] | 2012-06-07 → 2013-06-25 (+383d) | 2012-07-04 → 2013-07-15 (+376d) | 20d → 15d |  | resources Renat → Max; Alex |
| 95 | **TrueKnowledge** | 2012-05-24 → 2013-07-16 (+418d) | 2012-07-04 → 2013-08-19 (+411d) | 30d → 25d |  |  |
| 96 | Explore API to integrate = 10 - 20 [could be not strait forward] | 2012-05-24 → 2013-07-16 (+418d) | 2012-06-06 → 2013-07-29 (+418d) |  | none → 94 | resources Artem → Max; Alex |
| 97 | Test information retrieval and annotation options = 20 - 30 [could contain information not from SE domain] | 2012-06-07 → 2013-07-30 (+418d) | 2012-07-04 → 2013-08-19 (+411d) | 20d → 15d |  | resources Artem → Max; Alex |
| 98 | **ConceptNet** | 2012-06-01 → 2013-08-20 (+445d) | 2012-07-12 → 2013-09-23 (+438d) | 30d → 25d |  |  |
| 99 | Explore API to integrate = 10 - 20 [could be not strait forward] | 2012-06-01 → 2013-08-20 (+445d) | 2012-06-14 → 2013-09-02 (+445d) |  | 78 → 78, 97 | resources Max → Max; Alex |
| 100 | Test information retrieval and annotation options = 20 - 30 [could contain information not from SE domain] | 2012-06-15 → 2013-09-03 (+445d) | 2012-07-12 → 2013-09-23 (+438d) | 20d → 15d |  | resources Max → Max; Alex |
| 101 | **ConceptNet5** | 2012-06-01 → 2013-09-24 (+480d) | 2012-07-12 → 2013-10-28 (+473d) | 30d → 25d |  |  |
| 102 | Explore API to integrate = 10 - 20 [could be not strait forward] | 2012-06-01 → 2013-09-24 (+480d) | 2012-06-14 → 2013-10-07 (+480d) |  | 82 → 82, 100 | resources Alex → Max; Alex |
| 103 | Test information retrieval and annotation options = 20 - 30 [could contain information not from SE domain] | 2012-06-15 → 2013-10-08 (+480d) | 2012-07-12 → 2013-10-28 (+473d) | 20d → 15d |  | resources Alex → Max; Alex |
| 104 | **WordNet, is integrated in ConceptNet5 but could be useful standalone** | 2012-06-01 → 2013-10-29 (+515d) | 2012-07-12 → 2013-12-02 (+508d) | 30d → 25d |  |  |
| 105 | Explore API to integrate = 10 - 20 [could be not strait forward] | 2012-06-01 → 2013-10-29 (+515d) | 2012-06-14 → 2013-11-11 (+515d) |  | 86 → 86, 103 | resources Adel → Max; Alex |
| 106 | Test information retrieval and annotation options = 20 - 30 [could contain information not from SE domain] | 2012-06-15 → 2013-11-12 (+515d) | 2012-07-12 → 2013-12-02 (+508d) | 20d → 15d |  | resources none → Max; Alex |
| 107 | AIV Solution | 2012-07-13 → 2013-12-03 (+508d) | 2012-07-13 → 2013-12-03 (+508d) |  | 73 → 73, 106 |  |
| 108 | **Emotion Machine Soltion** | 2012-07-17 → 2013-12-04 (+505d) | 2012-09-04 → 2014-05-07 (+610d) | 36d → 111d |  |  |
| 109 | **Prototype Critics, Way2Think, Selector** | 2012-07-17 → 2013-12-04 (+505d) | 2012-08-03 → 2014-01-21 (+536d) | 14d → 35d |  |  |
| 110 | **Implement Critics** | 2012-07-17 → 2013-12-04 (+505d) | 2012-08-03 → 2014-01-21 (+536d) | 14d → 35d |  |  |
| 111 | **Deliberative Critics** | 2012-07-17 → 2013-12-04 (+505d) | 2012-07-26 → 2013-12-25 (+517d) | 8d → 16d |  |  |
| 112 | Current activity goal representation = 6 - 8 [possibly should try several approaches] | 2012-07-17 → 2013-12-04 (+505d) | 2012-07-24 → 2013-12-13 (+507d) | 6d → 8d |  |  |
| 113 | Current task state representation = 4 - 6 [possibly should try several representations] | 2012-07-17 → 2013-12-04 (+505d) | 2012-07-20 → 2013-12-11 (+509d) | 4d → 6d |  |  |
| 114 | Reasoning over current state with Reasoner adapter development = 8 - 10 | 2012-07-17 → 2013-12-12 (+513d) | 2012-07-26 → 2013-12-25 (+517d) | 8d → 10d | none → 113 | resources Adel → Alex |
| 115 | **Reflective Critic** | 2012-07-17 → 2013-12-16 (+517d) | 2012-07-24 → 2013-12-31 (+525d) | 6d → 12d |  |  |
| 116 | **Develop Energy control mechanism.** | 2012-07-17 → 2013-12-16 (+517d) | 2012-07-24 → 2013-12-31 (+525d) | 6d → 12d |  |  |
| 117 | Design Energy concept = 4 | 2012-07-17 → 2013-12-16 (+517d) | 2012-07-20 → 2013-12-19 (+517d) |  | none → 112 | resources Artem → Max |
| 118 | Design Energy assignment mechanism during training = 2 | 2012-07-17 → 2013-12-20 (+521d) | 2012-07-18 → 2013-12-23 (+523d) |  | none → 117 | resources Bulat → Max |
| 119 | Implement Energy concept = 2 | 2012-07-23 → 2013-12-24 (+519d) | 2012-07-24 → 2013-12-25 (+519d) |  | 117 → 117, 118 | resources Renat → Max |
| 120 | Implement Energy assignment mechanism = 4 | 2012-07-19 → 2013-12-26 (+525d) | 2012-07-24 → 2013-12-31 (+525d) |  | 118 → 118, 119 | resources Bulat → Max |
| 121 | **Develop Sub-goal control mechanism.** | 2012-07-23 → 2013-12-26 (+521d) | 2012-08-01 → 2014-01-06 (+523d) |  |  |  |
| 122 | Design sub-goal control mechanism = 4 | 2012-07-23 → 2013-12-26 (+521d) | 2012-07-26 → 2013-12-31 (+523d) |  | 113 → 114 |  |
| 123 | Implement sub-goal control mechanism = 4 | 2012-07-27 → 2014-01-01 (+523d) | 2012-08-01 → 2014-01-06 (+523d) |  |  |  |
| 124 | **Develop Evidence control mechanism.** | 2012-07-25 → 2014-01-01 (+525d) | 2012-08-03 → 2014-01-21 (+536d) | 8d → 15d |  |  |
| 125 | Design Evidence control mechanism = 4 - 10 [no clear understanding of evidence control mechanism, possibly further research required] | 2012-07-25 → 2014-01-01 (+525d) | 2012-07-30 → 2014-01-14 (+533d) | 4d → 10d | 112 → 112, 120 |  |
| 126 | Implement Evidence control mechanism = 4 - 10 | 2012-07-31 → 2014-01-15 (+533d) | 2012-08-03 → 2014-01-21 (+536d) | 4d → 5d |  | resources Max → Max; Alex |
| 127 | Prototype Selector = 6 - 8 | 2012-07-23 → 2014-01-07 (+533d) | 2012-07-30 → 2014-01-16 (+535d) | 6d → 8d | 117 → 117, 123 | resources Artem → Alex |
| 128 | **Prototype Way2Think** | 2012-07-25 → 2014-01-17 (+541d) | 2012-09-04 → 2014-04-28 (+601d) | 30d → 72d |  |  |
| 129 | Create base constructs(HowTo-s) = 2 - 4 | 2012-07-25 → 2014-01-17 (+541d) | 2012-07-26 → 2014-01-20 (+543d) |  | 119 → 119, 127 | resources Renat → Max; Alex |
| 130 | Knowing How (select from KB) = 4 - 8 | 2012-07-25 → 2014-01-21 (+545d) | 2012-07-30 → 2014-01-24 (+543d) |  | 120 → 120, 129 | resources Bulat → Max; Alex |
| 131 | Extensive Search (search in KB) = 12 - 24 [graph search could be not strait-forward] | 2012-07-27 → 2014-01-27 (+549d) | 2012-08-13 → 2014-02-11 (+547d) |  | 129 → 126, 129, 130 | resources Renat → Max; Alex |
| 132 | Reasoning by Analogy = 32 - 40 [graph analogy API could be not strait forward] | 2012-07-31 → 2014-02-12 (+561d) | 2012-08-14 → 2014-03-11 (+574d) | 11d → 20d | 114, 127 → 114, 127, 131 | resources Alex; Artem; Adel → Max; Alex |
| 133 | **Divide and Conquer** | 2012-07-31 → 2014-03-12 (+589d) | 2012-08-31 → 2014-04-10 (+587d) | 24d → 22d |  |  |
| 134 | **Add analytical HowTo-s to basic set:** | 2012-07-31 → 2014-03-12 (+589d) | 2012-08-09 → 2014-03-19 (+587d) | 8d → 6d |  |  |
| 135 | Wrong software was installed = 4 | 2012-08-06 → 2014-03-12 (+583d) | 2012-08-09 → 2014-03-17 (+585d) |  | 126 → 126, 132 | resources Max → Max; Alex |
| 136 | Two direct instructions in one incident description = 4 | 2012-07-31 → 2014-03-18 (+595d) | 2012-08-03 → 2014-03-19 (+593d) | 4d → 2d | 130 → 130, 135 | resources Bulat → Max; Alex |
| 137 | **Add Interpretation mechanism over current state of the system** | 2012-08-06 → 2014-03-20 (+591d) | 2012-08-31 → 2014-04-10 (+587d) | 20d → 16d |  |  |
| 138 | Variable and current state addressing = 12 - 16 | 2012-08-06 → 2014-03-20 (+591d) | 2012-08-21 → 2014-03-31 (+587d) | 12d → 8d |  | resources Bulat → Max; Alex |
| 139 | Logical operation execution = 16 | 2012-08-10 → 2014-04-01 (+599d) | 2012-08-31 → 2014-04-10 (+587d) | 16d → 8d | 135 → 135, 138 | resources Max → Max; Alex |
| 140 | **Simulation (build the model based on inbound information) =** | 2012-08-14 → 2014-04-11 (+605d) | 2012-09-04 → 2014-04-28 (+601d) | 16d → 12d | none → 139 |  |

| ID | Task | Start | Finish | Duration | Predecessors | Other |
| --- | --- | --- | --- | --- | --- | --- |
| 141 | Search for concept in the KB. = 16 | 2012-08-14 → 2014-04-11 (+605d) | 2012-09-04 → 2014-04-22 (+595d) | 16d → 8d |  | resources Renat → Max; Alex |
| 142 | Search for properties in KB. = 4 | 2012-08-15 → 2014-04-23 (+616d) | 2012-08-20 → 2014-04-24 (+612d) | 4d → 2d | 132 → 132, 141 | resources Artem → Max; Alex |
| 143 | Create connections of found concepts. = 2 | 2012-08-15 → 2014-04-25 (+618d) | 2012-08-16 → 2014-04-28 (+620d) |  | 132 → 132, 142 |  |
| 144 | Support context. = 2 | 2012-08-22 → 2014-04-25 (+611d) | 2012-08-23 → 2014-04-28 (+613d) |  | 138 → 138, 142 | resources Bulat → Max |
| 145 | **Test main perceiving workflow** | 2012-08-24 → 2014-04-29 (+613d) | 2012-08-30 → 2014-05-07 (+615d) | 5d → 7d |  |  |
| 146 | Prototype Main Workflow. = 10 - 14 [some not well tested bugs could slow down the development]{Models, Critics, Way2Think ready to use} | 2012-08-24 → 2014-04-29 (+613d) | 2012-08-30 → 2014-05-07 (+615d) | 5d → 7d |  | resources Bulat; Alex → Max; Alex |
| 147 | Emotion machine solution | 2012-09-05 → 2014-05-08 (+610d) | 2012-09-05 → 2014-05-08 (+610d) |  |  |  |

## Version 3 (saved 2012-01-20)

Note of the change: Merge remote-tracking branch 'origin/master'

Last finish stays 2014-05-08.

Changed:

| ID | Task | Start | Finish | Duration | Other |
| --- | --- | --- | --- | --- | --- |
| 2 | Incidents |  |  |  | resources Max; Alex [50%] → Alex [50%]; Max |
| 3 | Workbook articles |  |  |  | resources Max; Alex → Alex; Max |
| 15 | Red documentation |  |  |  | resources Max; Alex → Alex; Max |
| 16 | Install CogBuntu |  |  |  | resources Max; Alex → Alex; Max |
| 20 | Test storage usability for knowledge representation |  |  |  | resources Max; Alex → Alex; Max |
| 21 | **Probability Logic Engines analysis** |  | 2012-05-09 → 2012-04-20 (-19d) | 34d → 21d |  |
| 24 | Test PLN using NARS data |  |  |  | resources Max; Alex → Alex; Max |
| 25 | Bayesian inference |  |  |  | resources Max; Alex → Alex; Max |
| 26 | **Embodiment** |  |  |  | resources Max; Alex → Alex; Max |
| 27 | Read documentation |  |  |  | resources Max; Alex → Alex; Max |
| 28 | Test embodiment system to simulate Intellix |  |  |  | resources Max; Alex → Alex; Max |
| 29 | **Natural language processors** |  |  |  | resources Max; Alex → Alex; Max |
| 34 | **System Training prototype** | 2012-07-26 → 2012-07-25 (-1d) |  | 213d → 214d |  |
| 35 | MOSES | 2012-07-26 → 2012-07-25 (-1d) | 2012-08-20 → 2012-08-17 (-3d) |  | resources Max; Alex → Alex; Max |
| 36 | Bayesian network | 2012-08-21 → 2012-08-20 (-1d) | 2012-09-11 → 2012-09-10 (-1d) |  | resources Max; Alex → Alex; Max |
| 58 | Software states |  |  |  | resources Max; Alex → Alex; Max |
| 60 | Analyse validation criteria types |  |  |  | resources Max; Alex → Alex; Max |
| 61 | Create descriptions via predicates (logical operations) |  |  |  | resources Max; Alex → Alex; Max |
| 63 | Design adapter |  |  |  | resources Max; Alex → Alex; Max |
| 64 | Implement adapter |  |  |  | resources Max; Alex → Alex; Max |
| 66 | HowTo types = 16 - 40 |  |  |  | resources Max; Alex → Alex; Max |
| 67 | Solution description language = 32 - 40 |  |  |  | resources Max; Alex → Alex; Max |
| 68 | Create 10 Solution descriptions = 16 - 32 |  |  |  | resources Max; Alex → Alex; Max |
| 70 | Analyse machine learning algorithms (C 4.5, Bayes network) = 16 - 24 |  |  |  | resources Max; Alex → Alex; Max |
| 71 | Train 10 Solutions (in: formalised problem description, out Solution) = 16 - 24 |  |  |  | resources Max; Alex → Alex; Max |
| 93 | Explore API to integrate = 10 - 20 [could be not strait forward] |  |  |  | resources Max; Alex → Alex; Max |
| 94 | Test information retrieval and annotation options = 20 - 30 [could contain information not from SE domain] |  |  |  | resources Max; Alex → Alex; Max |
| 96 | Explore API to integrate = 10 - 20 [could be not strait forward] |  |  |  | resources Max; Alex → Alex; Max |
| 97 | Test information retrieval and annotation options = 20 - 30 [could contain information not from SE domain] |  |  |  | resources Max; Alex → Alex; Max |
| 99 | Explore API to integrate = 10 - 20 [could be not strait forward] |  |  |  | resources Max; Alex → Alex; Max |
| 100 | Test information retrieval and annotation options = 20 - 30 [could contain information not from SE domain] |  |  |  | resources Max; Alex → Alex; Max |
| 102 | Explore API to integrate = 10 - 20 [could be not strait forward] |  |  |  | resources Max; Alex → Alex; Max |
| 103 | Test information retrieval and annotation options = 20 - 30 [could contain information not from SE domain] |  |  |  | resources Max; Alex → Alex; Max |
| 105 | Explore API to integrate = 10 - 20 [could be not strait forward] |  |  |  | resources Max; Alex → Alex; Max |
| 106 | Test information retrieval and annotation options = 20 - 30 [could contain information not from SE domain] |  |  |  | resources Max; Alex → Alex; Max |
| 126 | Implement Evidence control mechanism = 4 - 10 |  |  |  | resources Max; Alex → Alex; Max |
| 129 | Create base constructs(HowTo-s) = 2 - 4 |  |  |  | resources Max; Alex → Alex; Max |
| 130 | Knowing How (select from KB) = 4 - 8 |  |  |  | resources Max; Alex → Alex; Max |
| 131 | Extensive Search (search in KB) = 12 - 24 [graph search could be not strait-forward] |  |  |  | resources Max; Alex → Alex; Max |
| 132 | Reasoning by Analogy = 32 - 40 [graph analogy API could be not strait forward] |  |  |  | resources Max; Alex → Alex; Max |
| 135 | Wrong software was installed = 4 |  |  |  | resources Max; Alex → Alex; Max |
| 136 | Two direct instructions in one incident description = 4 |  |  |  | resources Max; Alex → Alex; Max |
| 138 | Variable and current state addressing = 12 - 16 |  |  |  | resources Max; Alex → Alex; Max |
| 139 | Logical operation execution = 16 |  |  |  | resources Max; Alex → Alex; Max |
| 141 | Search for concept in the KB. = 16 | 2014-04-11 → 2014-02-12 (-58d) | 2014-04-22 → 2014-02-21 (-60d) |  | resources Max; Alex → Alex; Max |
| 142 | Search for properties in KB. = 4 | 2014-04-23 → 2014-03-12 (-42d) | 2014-04-24 → 2014-03-13 (-42d) |  | resources Max; Alex → Alex; Max |
| 143 | Create connections of found concepts. = 2 | 2014-04-25 → 2014-03-14 (-42d) | 2014-04-28 → 2014-03-17 (-42d) |  |  |
| 144 | Support context. = 2 | 2014-04-25 → 2014-04-01 (-24d) | 2014-04-28 → 2014-04-02 (-26d) |  |  |
| 146 | Prototype Main Workflow. = 10 - 14 [some not well tested bugs could slow down the development]{Models, Critics, Way2Think ready to use} | 2014-04-29 → 2014-04-03 (-26d) | 2014-05-07 → 2014-04-11 (-26d) |  | resources Max; Alex → Alex; Max |
