How a schedule from GanttProject changed from version to version. A marks actual dates.

## Version 1 (saved 2012-01-11)

Note of the change: menta-0.3-94: Crete project plan. Started Gantt chart.

| ID | WBS | Task | Duration | Start | Finish |
| --- | --- | --- | --- | --- | --- |
| 1 | 1 | **Analysis** | 1d | 2012-01-11 | 2012-01-11 |
| 2 |  | Incidents analysis | 1d | 2012-01-11 | 2012-01-11 |

## Version 2 (saved 2012-01-12)

Note of the change: menta-0.3-90: Create prototypes with estimate list. Added validator to pp.

Last finish 2012-01-11 → 2012-05-17 (+127d).

Added:

| ID | Task | Duration | Start | Finish | Predecessors | Resources |
| --- | --- | --- | --- | --- | --- | --- |
| 3 | Workbook articles | 6d | 2012-01-23 | 2012-01-30 | 2 | Artem; Bulat; Alex; Renat; Adel |
| 4 | **Design Emotion Machine** | 38d | 2012-01-23 | 2012-03-14 |  |  |
| 5 | Inbound textual description | 1d | 2012-01-23 | 2012-01-23 |  | Alex |
| 6 | Internal knowledge(atom) representations | 8d | 2012-01-23 | 2012-02-01 |  | Max |
| 7 | Formalization outbound structures | 6d | 2012-02-02 | 2012-02-09 | 6 | Max |
| 8 | Design Solution HowTo-s | 16d | 2012-01-24 | 2012-02-14 | 5 | Alex |
| 9 | Design Critics | 12d | 2012-02-10 | 2012-02-27 | 7 | Max |
| 10 | Design Selector | 12d | 2012-02-15 | 2012-03-01 | 8 | Alex |
| 11 | Design Way2Think | 12d | 2012-02-28 | 2012-03-14 | 9 | Max |
| 12 | Analysis and design | 0d | 2012-03-15 | 2012-03-15 | 1, 4 | Alex |
| 13 | **OpenCog prototype** | 31d | 2012-01-31 | 2012-03-13 | 1 |  |
| 14 | **CogBuntu** | 3d | 2012-01-31 | 2012-02-02 |  |  |
| 15 | Red documentation | 1d | 2012-01-31 | 2012-01-31 |  | Artem; Bulat; Alex; Renat; Adel |
| 16 | Install CogBuntu | 2d | 2012-02-01 | 2012-02-02 | 15 | Artem; Bulat; Alex; Renat; Adel |
| 17 | **AtomSpace Analysis** | 22d | 2012-02-03 | 2012-03-05 | 14 | Artem |
| 18 | Read documentation | 2d | 2012-02-03 | 2012-02-06 |  | Artem |
| 19 | Test storage using Cookbook | 4d | 2012-02-07 | 2012-02-10 | 18 |  |
| 20 | Test storage usability for knowledge representation | 16d | 2012-02-13 | 2012-03-05 | 19 |  |
| 21 | **Probability Logic Engines analysis** | 22d | 2012-02-03 | 2012-03-05 | 14 | Renat |
| 22 | **PLN analysis** | 6d | 2012-02-03 | 2012-02-10 |  |  |
| 23 | Read documentation | 2d | 2012-02-03 | 2012-02-06 |  |  |
| 24 | Test PLN using NARS data | 4d | 2012-02-07 | 2012-02-10 | 23 |  |
| 25 | Bayesian inference | 16d | 2012-02-13 | 2012-03-05 | 24 |  |
| 26 | **Embodiment** | 28d | 2012-02-03 | 2012-03-13 | 1, 14 | Adel |
| 27 | Read documentation | 8d | 2012-02-03 | 2012-02-14 |  |  |
| 28 | Test embodiment system to simulate Intellix | 20d | 2012-02-15 | 2012-03-13 | 27 |  |
| 29 | **Natural language processors** | 18d | 2012-02-03 | 2012-02-28 | 14 | Bulat |
| 30 | RelEx | 8d | 2012-02-03 | 2012-02-14 |  |  |
| 31 | Stanford Parser | 4d | 2012-02-15 | 2012-02-20 | 30 |  |
| 32 | OpenNLP | 6d | 2012-02-21 | 2012-02-28 | 31 |  |
| 33 | **System Training prototype** | 75d | 2012-02-03 | 2012-05-17 | 14 |  |
| 34 | MOSES | 18d | 2012-02-29 | 2012-03-23 | 29 | Bulat |
| 35 | Bayesian network | 16d | 2012-03-06 | 2012-03-27 | 17 | Artem |
| 36 | **Training** | 19d | 2012-03-02 | 2012-03-28 |  |  |
| 37 | **Training data structures** | 19d | 2012-03-02 | 2012-03-28 |  |  |
| 38 | Incident description | 1d | 2012-03-02 | 2012-03-02 | 10 | Alex |
| 39 | Incident category | 1d | 2012-03-05 | 2012-03-05 | 38 | Alex |
| 40 | **Incident formalized description** | 10d | 2012-03-15 | 2012-03-28 | 7 | Max |
| 41 | Model | 10d | 2012-03-15 | 2012-03-28 | 11 | Max |
| 42 | Incident solution(Migrate HowTo approach | 10d | 2012-03-06 | 2012-03-19 | 39 | Alex |
| 43 | **Create formalized description generalisation mechanism** | 37d | 2012-03-06 | 2012-04-25 |  |  |
| 44 | **Create common parts selector and variable introducer** | 37d | 2012-03-06 | 2012-04-25 |  |  |
| 45 | Comparator | 6d | 2012-03-06 | 2012-03-13 | 21 | Renat |
| 46 | Recursive runner | 8d | 2012-03-14 | 2012-03-23 | 45 | Renat |
| 47 | **Variable introducer** | 27d | 2012-03-20 | 2012-04-25 |  |  |
| 48 | Design variable structure | 4d | 2012-03-29 | 2012-04-03 | 41 | Max |
| 49 | Implement and test variable | 8d | 2012-04-04 | 2012-04-13 | 48 | Max |
| 50 | Named variables builder | 8d | 2012-04-16 | 2012-04-25 | 49 | Max |
| 51 | Unnamed variables builder | 8d | 2012-03-20 | 2012-03-29 | 42 | Alex |
| 52 | **Incident classification algorithm** | 35d | 2012-03-14 | 2012-05-01 |  |  |
| 53 | **Create test data for KnowledgeBaseAnnotator** | 35d | 2012-03-14 | 2012-05-01 |  |  |
| 54 | Allowed Software list | 6d | 2012-03-14 | 2012-03-21 | 26 | Adel |
| 55 | Over software actions | 4d | 2012-04-26 | 2012-05-01 | 50 | Max |
| 56 | Software attributes | 8d | 2012-03-26 | 2012-04-04 | 46 | Renat |
| 57 | Software states | 4d | 2012-03-22 | 2012-03-27 | 54 | Adel |
| 58 | **Create validation criteria inference approach** | 75d | 2012-02-03 | 2012-05-17 |  |  |
| 59 | Analyse validation criteria types | 10d | 2012-03-28 | 2012-04-10 | 57 | Adel |
| 60 | Create descriptions via predicates (logical operations) | 14d | 2012-03-26 | 2012-04-12 | 34 | Artem; Bulat |
| 61 | **Create validation mechanism possibly via PLN** | 35d | 2012-03-30 | 2012-05-17 |  |  |
| 62 | Design adapter | 8d | 2012-03-30 | 2012-04-10 | 51 | Alex |
| 63 | Implement adapter | 12d | 2012-05-02 | 2012-05-17 | 55 | Renat; Max |
| 64 | Create Solution generation prototype | 1d | 2012-02-03 | 2012-02-03 |  |  |

Changed:

| ID | Task | Start | Finish | Duration | Other |
| --- | --- | --- | --- | --- | --- |
| 1 | **Analysis** | 2012-01-11 → 2012-01-16 (+5d) | 2012-01-11 → 2012-01-30 (+19d) | 1d → 11d |  |
| 2 | Incidents | 2012-01-11 → 2012-01-16 (+5d) | 2012-01-11 → 2012-01-20 (+9d) | 1d → 5d | was named Incidents analysis; resources none → Artem; Bulat; Alex [50%]; Renat; Adel [50%] |

## Version 3 (saved 2012-01-13)

Note of the change: menta-0.3-90: Create prototypes with estimate list. Added Emotion Machine estimates and workload.

Last finish 2012-05-17 → 2012-07-12 (+56d).

Added:

| ID | Task | Duration | Start | Finish | Predecessors | Resources |
| --- | --- | --- | --- | --- | --- | --- |
| 65 | HowTo types = 16 - 40 | 16d | 2012-04-09 | 2012-04-30 | 60 | Alex |
| 66 | Solution description language = 32 - 40 | 32d | 2012-04-09 | 2012-05-22 | 60 | Artem |
| 67 | Create 10 Solution descriptions = 16 - 32 | 16d | 2012-04-17 | 2012-05-08 | 63 | Bulat |
| 68 | **Train Solutions** | 23d | 2012-04-17 | 2012-05-17 |  |  |
| 69 | Analyse machine learning algorithms (C 4.5, Bayes network) = 16 - 24 | 16d | 2012-04-17 | 2012-05-08 | 63 | Renat |
| 70 | Train 10 Solutions (in: formalised problem description, out Solution) = 16 - 24 | 16d | 2012-04-26 | 2012-05-17 | 50 | Max |
| 71 | Training prototype milestone | 0d | 2012-05-23 | 2012-05-23 | 33 |  |
| 72 | **Emotion Machine Soltion** | 36d | 2012-05-24 | 2012-07-12 | 71 |  |
| 73 | **Prototype Critics, Way2Think, Selector** | 14d | 2012-05-24 | 2012-06-12 |  |  |
| 74 | **Implement Critics** | 14d | 2012-05-24 | 2012-06-12 |  |  |
| 75 | **Deliberative Critics** | 8d | 2012-05-24 | 2012-06-04 |  |  |
| 76 | Current activity goal representation = 6 - 8 [possibly should try several approaches] | 6d | 2012-05-24 | 2012-05-31 |  | Max |
| 77 | Current task state representation = 4 - 6 [possibly should try several representations] | 4d | 2012-05-24 | 2012-05-29 |  | Alex |
| 78 | Reasoning over current state with Reasoner adapter development = 8 - 10 | 8d | 2012-05-24 | 2012-06-04 |  | Adel |
| 79 | **Reflective Critic** | 6d | 2012-05-24 | 2012-05-31 |  |  |
| 80 | **Develop Energy control mechanism.** | 6d | 2012-05-24 | 2012-05-31 |  |  |
| 81 | Design Energy concept = 4 | 4d | 2012-05-24 | 2012-05-29 |  | Artem |
| 82 | Design Energy assignment mechanism during training = 2 | 2d | 2012-05-24 | 2012-05-25 |  | Bulat |
| 83 | Implement Energy concept = 2 | 2d | 2012-05-30 | 2012-05-31 | 81 | Renat |
| 84 | Implement Energy assignment mechanism = 4 | 4d | 2012-05-28 | 2012-05-31 | 82 | Bulat |
| 85 | **Develop Sub-goal control mechanism.** | 8d | 2012-05-30 | 2012-06-08 |  |  |
| 86 | Design sub-goal control mechanism = 4 | 4d | 2012-05-30 | 2012-06-04 | 77 | Alex |
| 87 | Implement sub-goal control mechanism = 4 | 4d | 2012-06-05 | 2012-06-08 | 86 | Alex |
| 88 | **Develop Evidence control mechanism.** | 8d | 2012-06-01 | 2012-06-12 |  |  |
| 89 | Design Evidence control mechanism = 4 - 10 [no clear understanding of evidence control mechanism, possibly further research required] | 4d | 2012-06-01 | 2012-06-06 | 76 | Max |
| 90 | Implement Evidence control mechanism = 4 - 10 | 4d | 2012-06-07 | 2012-06-12 | 89 | Max |
| 91 | Prototype Selector = 6 - 8 | 6d | 2012-05-30 | 2012-06-06 | 81 | Artem |
| 92 | **Prototype Way2Think** | 30d | 2012-06-01 | 2012-07-12 |  |  |
| 93 | Create base constructs(HowTo-s) = 2 - 4 | 2d | 2012-06-01 | 2012-06-04 | 83 | Renat |
| 94 | Knowing How (select from KB) = 4 - 8 | 4d | 2012-06-01 | 2012-06-06 | 84 | Bulat |
| 95 | Extensive Search (search in KB) = 12 - 24 [graph search could be not strait-forward] | 12d | 2012-06-05 | 2012-06-20 | 93 | Renat |
| 96 | Reasoning by Analogy = 32 - 40 [graph analogy API could be not strait forward] | 16d | 2012-06-07 | 2012-06-28 | 91 | Alex; Artem |
| 97 | **Divide and Conquer** | 24d | 2012-06-07 | 2012-07-10 |  |  |
| 98 | **Add analytical HowTo-s to basic set:** | 8d | 2012-06-07 | 2012-06-18 |  |  |
| 99 | Wrong software was installed = 4 | 4d | 2012-06-13 | 2012-06-18 | 90 | Max |
| 100 | Two direct instructions in one incident description = 4 | 4d | 2012-06-07 | 2012-06-12 | 94 | Bulat |
| 101 | **Add Interpretation mechanism over current state of the system** | 20d | 2012-06-13 | 2012-07-10 |  |  |
| 102 | Variable and current state addressing = 12 - 16 | 12d | 2012-06-13 | 2012-06-28 | 100 | Bulat |
| 103 | Logical operation execution = 16 | 16d | 2012-06-19 | 2012-07-10 | 99 | Max |
| 104 | **Simulation (build the model based on inbound information) =** | 16d | 2012-06-21 | 2012-07-12 |  |  |
| 105 | Search for concept in the KB. = 16 | 16d | 2012-06-21 | 2012-07-12 | 95 | Renat |
| 106 | Search for properties in KB. = 4 | 4d | 2012-06-29 | 2012-07-04 | 96 | Artem |
| 107 | Create connections of found concepts. = 2 | 2d | 2012-06-29 | 2012-07-02 | 96 | Alex |
| 108 | Support context. = 2 | 2d | 2012-06-29 | 2012-07-02 | 102 | Bulat |
| 109 | **Test main perceiving workflow** | 5d | 2012-07-03 | 2012-07-09 |  |  |
| 110 | Prototype Main Workflow. = 10 - 14 [some not well tested bugs could slow down the development]{Models, Critics, Way2Think ready to use} | 5d | 2012-07-03 | 2012-07-09 | 107, 108 | Alex; Bulat |

Changed:

| ID | Task | Start | Finish | Duration | Predecessors | Other |
| --- | --- | --- | --- | --- | --- | --- |
| 2 | Incidents |  |  |  |  | resources Artem; Bulat; Alex [50%]; Renat; Adel [50%] → Alex [50%]; Bulat; Adel [50%]; Artem; Renat |
| 3 | Workbook articles |  |  |  |  | resources Artem; Bulat; Alex; Renat; Adel → Alex; Bulat; Adel; Artem; Renat |
| 15 | Red documentation |  |  |  |  | resources Artem; Bulat; Alex; Renat; Adel → Alex; Bulat; Adel; Artem; Renat |
| 16 | Install CogBuntu |  |  |  |  | resources Artem; Bulat; Alex; Renat; Adel → Alex; Bulat; Adel; Artem; Renat |
| 33 | **System Training prototype** | 2012-02-03 → 2012-02-29 (+26d) | 2012-05-17 → 2012-05-22 (+5d) | 75d → 60d |  |  |
| 40 | **Incident formalized description** |  |  |  | 7 → 11 |  |
| 43 | **Create formalized description generalisation mechanism** |  | 2012-04-25 → 2012-04-26 (+1d) | 37d → 38d |  |  |
| 44 | **Create common parts selector and variable introducer** |  | 2012-04-25 → 2012-04-26 (+1d) | 37d → 38d |  |  |
| 47 | **Variable introducer** | 2012-03-20 → 2012-03-29 (+9d) | 2012-04-25 → 2012-04-26 (+1d) | 27d → 21d |  |  |
| 51 | Unnamed variables builder | 2012-03-20 → 2012-04-17 (+28d) | 2012-03-29 → 2012-04-26 (+28d) |  | 42 → 62 | resources Alex → Adel |
| 52 | **Incident classification algorithm** |  | 2012-05-01 → 2012-04-04 (-27d) | 35d → 16d |  |  |
| 53 | **Create test data for KnowledgeBaseAnnotator** |  | 2012-05-01 → 2012-04-04 (-27d) | 35d → 16d |  |  |
| 55 | Over software actions | 2012-04-26 → 2012-03-26 (-31d) | 2012-05-01 → 2012-03-29 (-33d) |  | 50 → 34 | resources Max → Bulat |
| 57 | Software states | 2012-03-22 → 2012-03-20 (-2d) | 2012-03-27 → 2012-03-23 (-4d) |  | 54 → 42 | resources Adel → Alex |
| 58 | **Create validation criteria inference approach** | 2012-02-03 → 2012-03-20 (+46d) | 2012-05-17 → 2012-05-22 (+5d) | 75d → 46d |  |  |
| 59 | Analyse validation criteria types | 2012-03-28 → 2012-03-22 (-6d) | 2012-04-10 → 2012-04-04 (-6d) |  | 57 → 54 |  |
| 60 | Create descriptions via predicates (logical operations) | 2012-03-26 → 2012-03-20 (-6d) | 2012-04-12 → 2012-04-06 (-6d) |  | 34 → 42 | resources Artem; Bulat → Alex; Artem |
| 61 | **Create validation mechanism possibly via PLN** |  | 2012-05-17 → 2012-04-16 (-31d) | 35d → 12d |  |  |
| 62 | Design adapter | 2012-03-30 → 2012-04-05 (+6d) | 2012-04-10 → 2012-04-16 (+6d) |  | 51 → 59 | resources Alex → Adel |
| 63 | Implement adapter | 2012-05-02 → 2012-03-30 (-33d) | 2012-05-17 → 2012-04-16 (-31d) |  |  | resources Renat; Max → Bulat; Renat |
| 64 | **Create Solution generation prototype** | 2012-02-03 → 2012-04-09 (+66d) | 2012-02-03 → 2012-05-22 (+109d) | 1d → 32d |  |  |

## Version 4 (saved 2012-01-14)

Note of the change: Added AIV solution.

Last finish 2012-07-12 → 2012-09-04 (+54d).

Added:

| ID | Task | Duration | Start | Finish | Predecessors | Resources |
| --- | --- | --- | --- | --- | --- | --- |
| 111 | Emotion machine solution | 0d | 2012-07-13 | 2012-07-13 | 1, 104, 108, 110 |  |
| 112 | **AIV Solution, for the specification see page.** | 36d | 2012-07-16 | 2012-09-03 | 111 |  |
| 113 | **Auto-correct analysis should use measures: precision, recall and F-measure** | 6d | 2012-07-16 | 2012-07-23 |  |  |
| 114 | **AbiWord** | 6d | 2012-07-16 | 2012-07-23 |  |  |
| 115 | Read Syntax check module documentation = 1 | 1d | 2012-07-16 | 2012-07-16 |  | Max |
| 116 | Install AbiWord = 1 - 2 | 1d | 2012-07-17 | 2012-07-17 | 115 | Max |
| 117 | Test 10 incidents descriptions = 3.5 - 4 | 4d | 2012-07-18 | 2012-07-23 | 116 | Max |
| 118 | **OpenOffice(LibreOffice)** | 6d | 2012-07-16 | 2012-07-23 |  |  |
| 119 | Read Auto-correct module documentation OpenOffice LibreOffice = 1 | 1d | 2012-07-16 | 2012-07-16 |  | Alex |
| 120 | Install OpenOffice or LibreOffice = 1 - 2 | 1d | 2012-07-17 | 2012-07-17 | 119 | Alex |
| 121 | Test 10 incidents descriptions = 3.5 - 4 | 4d | 2012-07-18 | 2012-07-23 | 120 | Alex |
| 122 | **OpenCog** | 6d | 2012-07-16 | 2012-07-23 |  |  |
| 123 | Read Auto-correct module documentation Grammatical correction = 1 - 2 | 1d | 2012-07-16 | 2012-07-16 |  | Adel |
| 124 | Install OpenCog = 1 - 2 | 1d | 2012-07-17 | 2012-07-17 | 123 | Adel |
| 125 | Test 10 incidents descriptions = 3.5 - 4 | 4d | 2012-07-18 | 2012-07-23 | 124 | Adel |
| 126 | **KOffice** | 6d | 2012-07-16 | 2012-07-23 |  |  |
| 127 | Read Auto-correct module documentation = 1 - 2 | 1d | 2012-07-16 | 2012-07-16 |  | Bulat |
| 128 | Install KOffice = 1 - 4 [Could be not strait forward under Win] | 1d | 2012-07-17 | 2012-07-17 | 127 | Bulat |
| 129 | Test 10 incidents descriptions = 3.5 - 4 | 4d | 2012-07-18 | 2012-07-23 | 128 | Bulat |
| 130 | **KnowledgeBaseAnnotator, see specification. knowledge base integration analysis.** | 36d | 2012-07-16 | 2012-09-03 |  |  |
| 131 | **WolframAlpha** | 30d | 2012-07-16 | 2012-08-24 |  |  |
| 132 | Explore API to integrate = 10 - 20 [could be not strait forward] | 10d | 2012-07-16 | 2012-07-27 |  | Renat |
| 133 | Test information retrieval and annotation options = 20 - 30 [could contain information not from SE domain] | 20d | 2012-07-30 | 2012-08-24 | 132 | Renat |
| 134 | **TrueKnowledge** | 30d | 2012-07-24 | 2012-09-03 |  |  |
| 135 | Explore API to integrate = 10 - 20 [could be not strait forward] | 10d | 2012-07-24 | 2012-08-06 |  | Artem |
| 136 | Test information retrieval and annotation options = 20 - 30 [could contain information not from SE domain] | 20d | 2012-08-07 | 2012-09-03 | 135 | Artem |
| 137 | **ConceptNet** | 30d | 2012-07-24 | 2012-09-03 |  |  |
| 138 | Explore API to integrate = 10 - 20 [could be not strait forward] | 10d | 2012-07-24 | 2012-08-06 | 117 | Max |
| 139 | Test information retrieval and annotation options = 20 - 30 [could contain information not from SE domain] | 20d | 2012-08-07 | 2012-09-03 | 138 | Max |
| 140 | **ConceptNet5** | 30d | 2012-07-24 | 2012-09-03 |  |  |
| 141 | Explore API to integrate = 10 - 20 [could be not strait forward] | 10d | 2012-07-24 | 2012-08-06 | 121 | Alex |
| 142 | Test information retrieval and annotation options = 20 - 30 [could contain information not from SE domain] | 20d | 2012-08-07 | 2012-09-03 | 141 | Alex |
| 143 | **WordNet, is integrated in ConceptNet5 but could be useful standalone** | 30d | 2012-07-24 | 2012-09-03 |  |  |
| 144 | Explore API to integrate = 10 - 20 [could be not strait forward] | 10d | 2012-07-24 | 2012-08-06 | 125 | Adel |
| 145 | Test information retrieval and annotation options = 20 - 30 [could contain information not from SE domain] | 20d | 2012-08-07 | 2012-09-03 | 144 |  |
| 146 | AIV Solution | 0d | 2012-09-04 | 2012-09-04 | 130 |  |

Changed:

| ID | Task | Start | Finish | Duration | Predecessors | Other |
| --- | --- | --- | --- | --- | --- | --- |
| 2 | Incidents |  |  |  |  | resources Alex [50%]; Bulat; Adel [50%]; Artem; Renat → Adel [50%]; Bulat; Alex [50%]; Artem; Renat |
| 3 | Workbook articles |  |  |  |  | resources Alex; Bulat; Adel; Artem; Renat → Adel; Bulat; Alex; Artem; Renat |
| 15 | Red documentation |  |  |  |  | resources Alex; Bulat; Adel; Artem; Renat → Adel; Bulat; Alex; Artem; Renat |
| 16 | Install CogBuntu |  |  |  |  | resources Alex; Bulat; Adel; Artem; Renat → Adel; Bulat; Alex; Artem; Renat |
| 96 | Reasoning by Analogy = 32 - 40 [graph analogy API could be not strait forward] |  | 2012-06-28 → 2012-06-21 (-7d) | 16d → 11d | 91 → 78, 91 | resources Alex; Artem → Adel; Alex; Artem |
| 106 | Search for properties in KB. = 4 | 2012-06-29 → 2012-06-22 (-7d) | 2012-07-04 → 2012-06-27 (-7d) |  |  |  |
| 107 | Create connections of found concepts. = 2 | 2012-06-29 → 2012-06-22 (-7d) | 2012-07-02 → 2012-06-25 (-7d) |  |  |  |
| 110 | Prototype Main Workflow. = 10 - 14 [some not well tested bugs could slow down the development]{Models, Critics, Way2Think ready to use} |  |  |  |  | resources Alex; Bulat → Bulat; Alex |

## Version 5 (saved 2012-01-15)

Note of the change: menta-0.3-94: Crete project plan. Added milestones to project-plan.md.

Last finish 2012-09-04 → 2012-09-05 (+1d).

Added:

| ID | Task | Duration | Start | Finish | Predecessors |
| --- | --- | --- | --- | --- | --- |
| 33 | OpenCog analysis | 0d | 2012-03-14 | 2012-03-14 | 13 |

Changed:

| ID | Task | Start | Finish | Predecessors | Other |
| --- | --- | --- | --- | --- | --- |
| 2 | Incidents |  |  |  | resources Adel [50%]; Bulat; Alex [50%]; Artem; Renat → Artem; Alex [50%]; Bulat; Renat; Adel [50%] |
| 3 | Workbook articles |  |  |  | resources Adel; Bulat; Alex; Artem; Renat → Artem; Alex; Bulat; Renat; Adel |
| 15 | Red documentation |  |  |  | resources Adel; Bulat; Alex; Artem; Renat → Artem; Alex; Bulat; Renat; Adel |
| 16 | Install CogBuntu |  |  |  | resources Adel; Bulat; Alex; Artem; Renat → Artem; Alex; Bulat; Renat; Adel |
| 61 | Create descriptions via predicates (logical operations) |  |  |  | resources Alex; Artem → Artem; Alex |
| 73 | **AIV Solution, for the specification see page.** | 2012-07-16 → 2012-05-24 (-53d) | 2012-09-03 → 2012-07-12 (-53d) | 147 → 72 |  |
| 74 | **Auto-correct analysis should use measures: precision, recall and F-measure** | 2012-07-16 → 2012-06-29 (-17d) | 2012-07-23 → 2012-07-06 (-17d) |  |  |
| 75 | **AbiWord** | 2012-07-16 → 2012-05-24 (-53d) | 2012-07-23 → 2012-05-31 (-53d) |  |  |
| 76 | Read Syntax check module documentation = 1 | 2012-07-16 → 2012-05-24 (-53d) | 2012-07-16 → 2012-05-24 (-53d) |  |  |
| 77 | Install AbiWord = 1 - 2 | 2012-07-17 → 2012-05-25 (-53d) | 2012-07-17 → 2012-05-25 (-53d) |  |  |
| 78 | Test 10 incidents descriptions = 3.5 - 4 | 2012-07-18 → 2012-05-28 (-51d) | 2012-07-23 → 2012-05-31 (-53d) |  |  |
| 79 | **OpenOffice(LibreOffice)** | 2012-07-16 → 2012-05-24 (-53d) | 2012-07-23 → 2012-05-31 (-53d) |  |  |
| 80 | Read Auto-correct module documentation OpenOffice LibreOffice = 1 | 2012-07-16 → 2012-05-24 (-53d) | 2012-07-16 → 2012-05-24 (-53d) |  |  |
| 81 | Install OpenOffice or LibreOffice = 1 - 2 | 2012-07-17 → 2012-05-25 (-53d) | 2012-07-17 → 2012-05-25 (-53d) |  |  |
| 82 | Test 10 incidents descriptions = 3.5 - 4 | 2012-07-18 → 2012-05-28 (-51d) | 2012-07-23 → 2012-05-31 (-53d) |  |  |
| 83 | **OpenCog** | 2012-07-16 → 2012-05-24 (-53d) | 2012-07-23 → 2012-05-31 (-53d) |  |  |
| 84 | Read Auto-correct module documentation Grammatical correction = 1 - 2 | 2012-07-16 → 2012-05-24 (-53d) | 2012-07-16 → 2012-05-24 (-53d) |  |  |
| 85 | Install OpenCog = 1 - 2 | 2012-07-17 → 2012-05-25 (-53d) | 2012-07-17 → 2012-05-25 (-53d) |  |  |
| 86 | Test 10 incidents descriptions = 3.5 - 4 | 2012-07-18 → 2012-05-28 (-51d) | 2012-07-23 → 2012-05-31 (-53d) |  |  |
| 87 | **KOffice** | 2012-07-16 → 2012-05-24 (-53d) | 2012-07-23 → 2012-05-31 (-53d) |  |  |
| 88 | Read Auto-correct module documentation = 1 - 2 | 2012-07-16 → 2012-05-24 (-53d) | 2012-07-16 → 2012-05-24 (-53d) |  |  |
| 89 | Install KOffice = 1 - 4 [Could be not strait forward under Win] | 2012-07-17 → 2012-05-25 (-53d) | 2012-07-17 → 2012-05-25 (-53d) |  |  |
| 90 | Test 10 incidents descriptions = 3.5 - 4 | 2012-07-18 → 2012-05-28 (-51d) | 2012-07-23 → 2012-05-31 (-53d) |  |  |
| 91 | **KnowledgeBaseAnnotator, see specification. knowledge base integration analysis.** | 2012-07-16 → 2012-05-24 (-53d) | 2012-09-03 → 2012-07-12 (-53d) |  |  |
| 92 | **WolframAlpha** | 2012-07-16 → 2012-05-24 (-53d) | 2012-08-24 → 2012-07-04 (-51d) |  |  |
| 93 | Explore API to integrate = 10 - 20 [could be not strait forward] | 2012-07-16 → 2012-05-24 (-53d) | 2012-07-27 → 2012-06-06 (-51d) |  |  |
| 94 | Test information retrieval and annotation options = 20 - 30 [could contain information not from SE domain] | 2012-07-30 → 2012-06-07 (-53d) | 2012-08-24 → 2012-07-04 (-51d) |  |  |
| 95 | **TrueKnowledge** | 2012-07-24 → 2012-05-24 (-61d) | 2012-09-03 → 2012-07-04 (-61d) |  |  |
| 96 | Explore API to integrate = 10 - 20 [could be not strait forward] | 2012-07-24 → 2012-05-24 (-61d) | 2012-08-06 → 2012-06-06 (-61d) |  |  |
| 97 | Test information retrieval and annotation options = 20 - 30 [could contain information not from SE domain] | 2012-08-07 → 2012-06-07 (-61d) | 2012-09-03 → 2012-07-04 (-61d) |  |  |
| 98 | **ConceptNet** | 2012-07-24 → 2012-06-01 (-53d) | 2012-09-03 → 2012-07-12 (-53d) |  |  |
| 99 | Explore API to integrate = 10 - 20 [could be not strait forward] | 2012-07-24 → 2012-06-01 (-53d) | 2012-08-06 → 2012-06-14 (-53d) |  |  |
| 100 | Test information retrieval and annotation options = 20 - 30 [could contain information not from SE domain] | 2012-08-07 → 2012-06-15 (-53d) | 2012-09-03 → 2012-07-12 (-53d) |  |  |
| 101 | **ConceptNet5** | 2012-07-24 → 2012-06-01 (-53d) | 2012-09-03 → 2012-07-12 (-53d) |  |  |
| 102 | Explore API to integrate = 10 - 20 [could be not strait forward] | 2012-07-24 → 2012-06-01 (-53d) | 2012-08-06 → 2012-06-14 (-53d) |  |  |
| 103 | Test information retrieval and annotation options = 20 - 30 [could contain information not from SE domain] | 2012-08-07 → 2012-06-15 (-53d) | 2012-09-03 → 2012-07-12 (-53d) |  |  |
| 104 | **WordNet, is integrated in ConceptNet5 but could be useful standalone** | 2012-07-24 → 2012-06-01 (-53d) | 2012-09-03 → 2012-07-12 (-53d) |  |  |
| 105 | Explore API to integrate = 10 - 20 [could be not strait forward] | 2012-07-24 → 2012-06-01 (-53d) | 2012-08-06 → 2012-06-14 (-53d) |  |  |
| 106 | Test information retrieval and annotation options = 20 - 30 [could contain information not from SE domain] | 2012-08-07 → 2012-06-15 (-53d) | 2012-09-03 → 2012-07-12 (-53d) |  |  |
| 107 | AIV Solution | 2012-09-04 → 2012-07-13 (-53d) | 2012-09-04 → 2012-07-13 (-53d) | 91 → 73 |  |
| 108 | **Emotion Machine Soltion** | 2012-05-24 → 2012-07-17 (+54d) | 2012-07-12 → 2012-09-04 (+54d) | 72 → 107 |  |
| 109 | **Prototype Critics, Way2Think, Selector** | 2012-05-24 → 2012-07-17 (+54d) | 2012-06-12 → 2012-08-03 (+52d) |  |  |
| 110 | **Implement Critics** | 2012-05-24 → 2012-07-17 (+54d) | 2012-06-12 → 2012-08-03 (+52d) |  |  |
| 111 | **Deliberative Critics** | 2012-05-24 → 2012-07-17 (+54d) | 2012-06-04 → 2012-07-26 (+52d) |  |  |
| 112 | Current activity goal representation = 6 - 8 [possibly should try several approaches] | 2012-05-24 → 2012-07-17 (+54d) | 2012-05-31 → 2012-07-24 (+54d) |  |  |
| 113 | Current task state representation = 4 - 6 [possibly should try several representations] | 2012-05-24 → 2012-07-17 (+54d) | 2012-05-29 → 2012-07-20 (+52d) |  |  |
| 114 | Reasoning over current state with Reasoner adapter development = 8 - 10 | 2012-05-24 → 2012-07-17 (+54d) | 2012-06-04 → 2012-07-26 (+52d) |  |  |
| 115 | **Reflective Critic** | 2012-05-24 → 2012-07-17 (+54d) | 2012-05-31 → 2012-07-24 (+54d) |  |  |
| 116 | **Develop Energy control mechanism.** | 2012-05-24 → 2012-07-17 (+54d) | 2012-05-31 → 2012-07-24 (+54d) |  |  |
| 117 | Design Energy concept = 4 | 2012-05-24 → 2012-07-17 (+54d) | 2012-05-29 → 2012-07-20 (+52d) |  |  |
| 118 | Design Energy assignment mechanism during training = 2 | 2012-05-24 → 2012-07-17 (+54d) | 2012-05-25 → 2012-07-18 (+54d) |  |  |
| 119 | Implement Energy concept = 2 | 2012-05-30 → 2012-07-23 (+54d) | 2012-05-31 → 2012-07-24 (+54d) |  |  |
| 120 | Implement Energy assignment mechanism = 4 | 2012-05-28 → 2012-07-19 (+52d) | 2012-05-31 → 2012-07-24 (+54d) |  |  |
| 121 | **Develop Sub-goal control mechanism.** | 2012-05-30 → 2012-07-23 (+54d) | 2012-06-08 → 2012-08-01 (+54d) |  |  |
| 122 | Design sub-goal control mechanism = 4 | 2012-05-30 → 2012-07-23 (+54d) | 2012-06-04 → 2012-07-26 (+52d) |  |  |
| 123 | Implement sub-goal control mechanism = 4 | 2012-06-05 → 2012-07-27 (+52d) | 2012-06-08 → 2012-08-01 (+54d) |  |  |
| 124 | **Develop Evidence control mechanism.** | 2012-06-01 → 2012-07-25 (+54d) | 2012-06-12 → 2012-08-03 (+52d) |  |  |
| 125 | Design Evidence control mechanism = 4 - 10 [no clear understanding of evidence control mechanism, possibly further research required] | 2012-06-01 → 2012-07-25 (+54d) | 2012-06-06 → 2012-07-30 (+54d) |  |  |
| 126 | Implement Evidence control mechanism = 4 - 10 | 2012-06-07 → 2012-07-31 (+54d) | 2012-06-12 → 2012-08-03 (+52d) |  |  |
| 127 | Prototype Selector = 6 - 8 | 2012-05-30 → 2012-07-23 (+54d) | 2012-06-06 → 2012-07-30 (+54d) |  |  |
| 128 | **Prototype Way2Think** | 2012-06-01 → 2012-07-25 (+54d) | 2012-07-12 → 2012-09-04 (+54d) |  |  |
| 129 | Create base constructs(HowTo-s) = 2 - 4 | 2012-06-01 → 2012-07-25 (+54d) | 2012-06-04 → 2012-07-26 (+52d) |  |  |
| 130 | Knowing How (select from KB) = 4 - 8 | 2012-06-01 → 2012-07-25 (+54d) | 2012-06-06 → 2012-07-30 (+54d) |  |  |
| 131 | Extensive Search (search in KB) = 12 - 24 [graph search could be not strait-forward] | 2012-06-05 → 2012-07-27 (+52d) | 2012-06-20 → 2012-08-13 (+54d) |  |  |
| 132 | Reasoning by Analogy = 32 - 40 [graph analogy API could be not strait forward] | 2012-06-07 → 2012-07-31 (+54d) | 2012-06-21 → 2012-08-14 (+54d) |  | resources Adel; Alex; Artem → Artem; Alex; Adel |
| 133 | **Divide and Conquer** | 2012-06-07 → 2012-07-31 (+54d) | 2012-07-10 → 2012-08-31 (+52d) |  |  |
| 134 | **Add analytical HowTo-s to basic set:** | 2012-06-07 → 2012-07-31 (+54d) | 2012-06-18 → 2012-08-09 (+52d) |  |  |
| 135 | Wrong software was installed = 4 | 2012-06-13 → 2012-08-06 (+54d) | 2012-06-18 → 2012-08-09 (+52d) |  |  |
| 136 | Two direct instructions in one incident description = 4 | 2012-06-07 → 2012-07-31 (+54d) | 2012-06-12 → 2012-08-03 (+52d) |  |  |
| 137 | **Add Interpretation mechanism over current state of the system** | 2012-06-13 → 2012-08-06 (+54d) | 2012-07-10 → 2012-08-31 (+52d) |  |  |

| ID | Task | Start | Finish | Predecessors | Other |
| --- | --- | --- | --- | --- | --- |
| 138 | Variable and current state addressing = 12 - 16 | 2012-06-13 → 2012-08-06 (+54d) | 2012-06-28 → 2012-08-21 (+54d) |  |  |
| 139 | Logical operation execution = 16 | 2012-06-19 → 2012-08-10 (+52d) | 2012-07-10 → 2012-08-31 (+52d) |  |  |
| 140 | **Simulation (build the model based on inbound information) =** | 2012-06-21 → 2012-08-14 (+54d) | 2012-07-12 → 2012-09-04 (+54d) |  |  |
| 141 | Search for concept in the KB. = 16 | 2012-06-21 → 2012-08-14 (+54d) | 2012-07-12 → 2012-09-04 (+54d) |  |  |
| 142 | Search for properties in KB. = 4 | 2012-06-22 → 2012-08-15 (+54d) | 2012-06-27 → 2012-08-20 (+54d) |  |  |
| 143 | Create connections of found concepts. = 2 | 2012-06-22 → 2012-08-15 (+54d) | 2012-06-25 → 2012-08-16 (+52d) |  |  |
| 144 | Support context. = 2 | 2012-06-29 → 2012-08-22 (+54d) | 2012-07-02 → 2012-08-23 (+52d) |  |  |
| 145 | **Test main perceiving workflow** | 2012-07-03 → 2012-08-24 (+52d) | 2012-07-09 → 2012-08-30 (+52d) |  |  |
| 146 | Prototype Main Workflow. = 10 - 14 [some not well tested bugs could slow down the development]{Models, Critics, Way2Think ready to use} | 2012-07-03 → 2012-08-24 (+52d) | 2012-07-09 → 2012-08-30 (+52d) |  | resources Bulat; Alex → Alex; Bulat |
| 147 | Emotion machine solution | 2012-07-13 → 2012-09-05 (+54d) | 2012-07-13 → 2012-09-05 (+54d) | 1, 140, 144, 146 → 108 |  |

## Version 6 (saved 2012-01-31)

Note of the change: Resolve

Last finish stays 2012-09-05.

Changed:

| ID | Task | Other |
| --- | --- | --- |
| 2 | Incidents | resources Artem; Alex [50%]; Bulat; Renat; Adel [50%] → Renat; Alex [50%]; Artem; Adel [50%]; Bulat |
| 3 | Workbook articles | resources Artem; Alex; Bulat; Renat; Adel → Renat; Alex; Artem; Adel; Bulat |
| 15 | Red documentation | resources Artem; Alex; Bulat; Renat; Adel → Renat; Alex; Artem; Adel; Bulat |
| 16 | Install CogBuntu | resources Artem; Alex; Bulat; Renat; Adel → Renat; Alex; Artem; Adel; Bulat |
| 61 | Create descriptions via predicates (logical operations) | resources Artem; Alex → Alex; Artem |
| 64 | Implement adapter | resources Bulat; Renat → Renat; Bulat |
| 132 | Reasoning by Analogy = 32 - 40 [graph analogy API could be not strait forward] | resources Artem; Alex; Adel → Alex; Artem; Adel |
